# Projeto-FINAL

Schedule from MS Project, 2019-08-23 to 2019-12-10, costs in R$, A marks actual dates.
SESI SENAI SP

## Calendars

- iDealInnovation: Mon-Tue 13:00-17:00; Wed off; Thu-Fri 13:00-17:00; Sat-Sun off. Exceptions (off unless hours are given): 2019-11-18 to 2019-11-19 (SEMANA DA TECNOLOGIA), 2019-11-21 to 2019-11-22 (HACKATHON), 2019-11-26 (HACKATHON - PARTE 2).

## Resources

| Resource | Unit | Rate |
| --- | --- | --- |
| Desenvolvedor Sênior - AA |  | 92.42 |
| Desenvolvedor Sênior - CG |  | 92.42 |
| Desenvolvedor Sênior - EL |  | 92.42 |
| Desenvolvedor Sênior - KL |  | 92.42 |
| Desenvolvedor Sênior - KS |  | 92.42 |
| FIGMA | SOF |  |
| ANDROID STUDIO | SOF |  |
| VISUAL STUDIO CODE | SOF |  |
| ECLIPSE | SOF |  |
| Estagiário - AA |  | 8.84 |
| Estagiário - CG |  | 8.84 |
| Estagiário - EL |  | 8.84 |
| Estagiário - KL |  | 8.84 |
| Estagiário - KS |  |  |
| Full-Stack - AA |  | 52.16 |
| Full-Stack - CG |  | 52.16 |
| Full-Stack - EL |  | 52.16 |
| Full-Stack - KL |  | 52.16 |
| Full-Stack - KS |  | 56.12 |

## Schedule

| ID | WBS | Task | Duration | Start | Finish | Predecessors | Complete | Baseline start | Baseline finish | Baseline duration | Resources | Work | Actual work | Cost | Baseline cost | Actual cost |
| --- | --- | --- | --- | --- | --- | --- | --- | --- | --- | --- | --- | --- | --- | --- | --- | --- |
| 1 | 1 | **Show de Bolos** | 28.62d | 2019-08-23 13:00 A | 2019-12-10 14:00 A |  | 100% | 2019-08-23 13:00 | 2019-11-12 15:00 | 23.25d |  | 540h | 540h | 26,092.92 | 17,155.32 | 26,092.92 |
| 2 | 1.1 | **Planejamento** | 20.25d | 2019-08-23 13:00 A | 2019-11-01 15:00 A |  | 100% | 2019-08-23 13:00 | 2019-10-10 17:00 | 14d |  | 63h | 63h | 1,380 | 1,327.84 | 1,380 |
| 3 | 1.1.1 | **Recursos Funcionais** | 20.25d | 2019-08-23 13:00 A | 2019-11-01 15:00 A |  | 100% | 2019-08-23 13:00 | 2019-10-10 17:00 | 14d |  | 63h | 63h | 1,380 | 1,327.84 | 1,380 |
| 4 | 1.1.1.1 | **Web** | 20.25d | 2019-08-23 13:00 A | 2019-11-01 15:00 A |  | 100% | 2019-08-23 13:00 | 2019-10-10 17:00 | 14d |  | 29h | 29h | 256.36 | 256.36 | 256.36 |
| 5 | 1.1.1.1.1 | **Wireframes** | 20.25d | 2019-08-23 13:00 A | 2019-11-01 15:00 A |  | 100% | 2019-08-23 13:00 | 2019-10-10 17:00 | 14d |  | 29h | 29h | 256.36 | 256.36 | 256.36 |
| 6 | 1.1.1.1.1.1 | Tela de Cadastro de Usuários | 2h | 2019-08-29 13:00 A | 2019-08-29 15:00 A | 8 | 100% | 2019-08-29 13:00 | 2019-08-29 15:00 | 2h | Estagiário - KS; FIGMA [1 SOF] | 2h | 2h | 17.68 | 17.68 | 17.68 |
| 7 | 1.1.1.1.1.2 | Tela de Cadastro de Endereço e Foto do Confeiteiro | 2h | 2019-08-29 15:00 A | 2019-08-29 17:00 A | 6 | 100% | 2019-08-29 15:00 | 2019-08-29 17:00 | 2h | FIGMA [1 SOF]; Estagiário - KL | 2h | 2h | 17.68 | 17.68 | 17.68 |
| 8 | 1.1.1.1.1.3 | Tela de Opção de Cadastro | 2h | 2019-08-27 15:00 A | 2019-08-27 17:00 A | 42 | 100% | 2019-08-27 15:00 | 2019-08-27 17:00 | 2h | Estagiário - EL; FIGMA [1 SOF] | 2h | 2h | 17.68 | 17.68 | 17.68 |
| 9 | 1.1.1.1.1.4 | Tela de Opção de Login | 2h | 2019-08-30 13:00 A | 2019-08-30 15:00 A | 7 | 100% | 2019-08-30 13:00 | 2019-08-30 15:00 | 2h | Estagiário - EL; FIGMA [1 SOF] | 2h | 2h | 17.68 | 17.68 | 17.68 |
| 10 | 1.1.1.1.1.5 | Tela de Login | 2h | 2019-08-30 15:00 A | 2019-08-30 17:00 A | 9 | 100% | 2019-08-30 15:00 | 2019-08-30 17:00 | 2h | Estagiário - AA; FIGMA [1 SOF] | 2h | 2h | 17.68 | 17.68 | 17.68 |
| 11 | 1.1.1.1.1.6 | Tela Área Administrativa e Produtos do Confeiteiro | 2h | 2019-09-09 15:00 A | 2019-09-09 17:00 A | 43 | 100% | 2019-09-09 15:00 | 2019-09-09 17:00 | 2h | Estagiário - KL; FIGMA [1 SOF] | 2h | 2h | 17.68 | 17.68 | 17.68 |
| 12 | 1.1.1.1.1.7 | Tela de Cadastro de produtos | 2h | 2019-09-10 13:00 A | 2019-09-10 15:00 A | 11 | 100% | 2019-09-10 13:00 | 2019-09-10 15:00 | 2h | Estagiário - KS; FIGMA [1 SOF] | 2h | 2h | 17.68 | 17.68 | 17.68 |
| 13 | 1.1.1.1.1.8 | Tela de Atualização de E-mail e Senha | 2h | 2019-08-23 13:00 A | 2019-08-23 15:00 A | 12 | 100% | 2019-08-23 13:00 | 2019-08-23 15:00 | 2h | Estagiário - KL; FIGMA [1 SOF] | 2h | 2h | 17.68 | 17.68 | 17.68 |
| 14 | 1.1.1.1.1.9 | Tela de Edição Endereço | 2h | 2019-08-23 15:00 A | 2019-08-23 17:00 A | 13 | 100% | 2019-08-23 15:00 | 2019-08-23 17:00 | 2h | Estagiário - KL; FIGMA [1 SOF] | 2h | 2h | 17.68 | 17.68 | 17.68 |
| 15 | 1.1.1.1.1.10 | Tela de Perfil do Confeiteiro | 1h | 2019-08-26 13:00 A | 2019-08-26 14:00 A | 14 | 100% | 2019-08-26 13:00 | 2019-08-26 14:00 | 1h | Estagiário - KS; FIGMA [1 SOF] | 1h | 1h | 8.84 | 8.84 | 8.84 |
| 16 | 1.1.1.1.1.11 | Tela de Inicio do Site | 1h | 2019-08-26 14:00 A | 2019-08-26 15:00 A | 15 | 100% | 2019-08-26 14:00 | 2019-08-26 15:00 | 1h | Estagiário - EL; FIGMA [1 SOF] | 1h | 1h | 8.84 | 8.84 | 8.84 |
| 17 | 1.1.1.1.1.12 | Tela de Produtos do Site | 1h | 2019-08-26 15:00 A | 2019-08-26 16:00 A | 16 | 100% | 2019-08-26 15:00 | 2019-08-26 16:00 | 1h | Estagiário - KS; FIGMA [1 SOF] | 1h | 1h | 8.84 | 8.84 | 8.84 |
| 18 | 1.1.1.1.1.13 | Tela de Exibição de Confeiteiros | 1h | 2019-08-26 16:00 A | 2019-08-26 17:00 A | 17 | 100% | 2019-08-26 16:00 | 2019-08-26 17:00 | 1h | Estagiário - KL; FIGMA [1 SOF] | 1h | 1h | 8.84 | 8.84 | 8.84 |
| 19 | 1.1.1.1.1.14 | Tela de Sobre | 1h | 2019-08-27 13:00 A | 2019-08-27 14:00 A | 18 | 100% | 2019-08-27 13:00 | 2019-08-27 14:00 | 1h | Estagiário - EL; FIGMA [1 SOF] | 1h | 1h | 8.84 | 8.84 | 8.84 |
| 20 | 1.1.1.1.1.15 | Tela de Fale Conosco | 2h | 2019-08-27 14:00 A | 2019-08-27 16:00 A | 19 | 100% | 2019-08-27 14:00 | 2019-08-27 16:00 | 2h | FIGMA [1 SOF]; Estagiário - AA | 2h | 2h | 17.68 | 17.68 | 17.68 |
| 21 | 1.1.1.1.1.16 | Tela para visualização dos pedidos - Confeiteiro | 2h | 2019-10-28 13:00 A | 2019-10-28 15:00 A | 44 | 100% | 2019-10-07 15:00 | 2019-10-07 17:00 | 2h | FIGMA [1 SOF]; Estagiário - KL | 2h | 2h | 17.68 | 17.68 | 17.68 |
| 22 | 1.1.1.1.1.17 | Telas de perfil, histórico e status dos pedidos - Cliente | 2h | 2019-11-01 13:00 A | 2019-11-01 15:00 A | 57 | 100% | 2019-10-10 15:00 | 2019-10-10 17:00 | 2h | Estagiário - KL; FIGMA [1 SOF] | 2h | 2h | 17.68 | 17.68 | 17.68 |
| 23 | 1.1.1.2 | **Mobile** | 17.62d | 2019-08-27 15:00 A | 2019-10-28 16:00 A |  | 100% | 2019-08-27 15:00 | 2019-10-08 14:00 | 11.88d |  | 15h | 15h | 132.6 | 132.6 | 132.6 |
| 24 | 1.1.1.2.1 | **Wireframes** | 17.62d | 2019-08-27 15:00 A | 2019-10-28 16:00 A |  | 100% | 2019-08-27 15:00 | 2019-10-08 14:00 | 11.88d |  | 15h | 15h | 132.6 | 132.6 | 132.6 |
| 25 | 1.1.1.2.1.1 | Tela Inicialização | 1h | 2019-08-27 15:00 A | 2019-08-27 16:00 A | 42 | 100% | 2019-08-27 15:00 | 2019-08-27 16:00 | 1h | Estagiário - AA; FIGMA [1 SOF] | 1h | 1h | 8.84 | 8.84 | 8.84 |
| 26 | 1.1.1.2.1.2 | Tela de Cadastro de Usuários | 1h | 2019-08-29 15:00 A | 2019-08-29 16:00 A | 28 | 100% | 2019-08-29 15:00 | 2019-08-29 16:00 | 1h | Estagiário - AA; FIGMA [1 SOF] | 1h | 1h | 8.84 | 8.84 | 8.84 |
| 27 | 1.1.1.2.1.3 | Tela de Cadastro de Endereço e Foto do Confeiteiro | 1h | 2019-08-29 16:00 A | 2019-08-29 17:00 A | 26 | 100% | 2019-08-29 16:00 | 2019-08-29 17:00 | 1h | Estagiário - AA; FIGMA [1 SOF] | 1h | 1h | 8.84 | 8.84 | 8.84 |
| 28 | 1.1.1.2.1.4 | Tela de Opção de Cadastro | 1h | 2019-08-29 14:00 A | 2019-08-29 15:00 A | 30 | 100% | 2019-08-29 14:00 | 2019-08-29 15:00 | 1h | Estagiário - AA; FIGMA [1 SOF] | 1h | 1h | 8.84 | 8.84 | 8.84 |
| 29 | 1.1.1.2.1.5 | Tela de Opção de Login | 1h | 2019-08-27 16:00 A | 2019-08-27 17:00 A | 25 | 100% | 2019-08-27 16:00 | 2019-08-27 17:00 | 1h | Estagiário - AA; FIGMA [1 SOF] | 1h | 1h | 8.84 | 8.84 | 8.84 |
| 30 | 1.1.1.2.1.6 | Login | 1h | 2019-08-29 13:00 A | 2019-08-29 14:00 A | 29 | 100% | 2019-08-29 13:00 | 2019-08-29 14:00 | 1h | Estagiário - AA; FIGMA [1 SOF] | 1h | 1h | 8.84 | 8.84 | 8.84 |
| 31 | 1.1.1.2.1.7 | Perfil do Confeiteiro | 1h | 2019-08-29 16:00 A | 2019-08-29 17:00 A | 33 | 100% | 2019-08-29 16:00 | 2019-08-29 17:00 | 1h | Estagiário - KS; FIGMA [1 SOF] | 1h | 1h | 8.84 | 8.84 | 8.84 |
| 32 | 1.1.1.2.1.8 | Tela de Produtos de Uma Categoria | 1h | 2019-08-29 16:00 A | 2019-08-29 17:00 A | 34 | 100% | 2019-08-29 16:00 | 2019-08-29 17:00 | 1h | Estagiário - KS; FIGMA [1 SOF] | 1h | 1h | 8.84 | 8.84 | 8.84 |
| 33 | 1.1.1.2.1.9 | Tela de Confeiteiros | 1h | 2019-08-29 15:00 A | 2019-08-29 16:00 A | 35 | 100% | 2019-08-29 15:00 | 2019-08-29 16:00 | 1h | Estagiário - KS; FIGMA [1 SOF] | 1h | 1h | 8.84 | 8.84 | 8.84 |
| 34 | 1.1.1.2.1.10 | Tela de Descrição do Produto | 1h | 2019-08-29 15:00 A | 2019-08-29 16:00 A | 35 | 100% | 2019-08-29 15:00 | 2019-08-29 16:00 | 1h | Estagiário - KS; FIGMA [1 SOF] | 1h | 1h | 8.84 | 8.84 | 8.84 |
| 35 | 1.1.1.2.1.11 | Tela Inicial | 1h | 2019-08-29 14:00 A | 2019-08-29 15:00 A | 30 | 100% | 2019-08-29 14:00 | 2019-08-29 15:00 | 1h | Estagiário - EL; FIGMA [1 SOF] | 1h | 1h | 8.84 | 8.84 | 8.84 |
| 36 | 1.1.1.2.1.12 | Tela para visualização dos pedidos - Confeiteiro | 1h | 2019-10-28 13:00 A | 2019-10-28 14:00 A | 44 | 100% | 2019-10-08 13:00 | 2019-10-08 14:00 | 1h | Estagiário - AA; FIGMA [1 SOF] | 1h | 1h | 8.84 | 8.84 | 8.84 |
| 37 | 1.1.1.2.1.13 | Visualização/Histórico dos pedidos - Cliente | 1h | 2019-10-28 15:00 A | 2019-10-28 16:00 A | 39 | 100% | 2019-10-08 13:00 | 2019-10-08 14:00 | 1h | Estagiário - AA; FIGMA [1 SOF] | 1h | 1h | 8.84 | 8.84 | 8.84 |
| 38 | 1.1.1.2.1.14 | Tela para visualizar os itens pedidos (carrinho) | 1h | 2019-10-28 13:00 A | 2019-10-28 14:00 A | 56 | 100% | 2019-10-07 15:00 | 2019-10-07 16:00 | 1h | Estagiário - KL; FIGMA [1 SOF] | 1h | 1h | 8.84 | 8.84 | 8.84 |
| 39 | 1.1.1.2.1.15 | Tela para confirmar o pedido | 1h | 2019-10-28 14:00 A | 2019-10-28 15:00 A | 38 | 100% | 2019-10-07 16:00 | 2019-10-07 17:00 | 1h | Estagiário - KL; FIGMA [1 SOF] | 1h | 1h | 8.84 | 8.84 | 8.84 |

| ID | WBS | Task | Duration | Start | Finish | Predecessors | Complete | Baseline start | Baseline finish | Baseline duration | Resources | Work | Actual work | Cost | Baseline cost | Actual cost |
| --- | --- | --- | --- | --- | --- | --- | --- | --- | --- | --- | --- | --- | --- | --- | --- | --- |
| 40 | 1.1.1.3 | **Banco de Dados** | 18.5d | 2019-08-23 13:00 A | 2019-10-25 17:00 A |  | 100% | 2019-08-23 13:00 | 2019-10-07 15:00 | 12.75d |  | 19h | 19h | 991.04 | 938.88 | 991.04 |
| 41 | 1.1.1.3.1 | **Modelagem Conceitual** | 18.5d | 2019-08-23 13:00 A | 2019-10-25 17:00 A |  | 100% | 2019-08-23 13:00 | 2019-10-07 15:00 | 12.75d |  | 19h | 19h | 991.04 | 938.88 | 991.04 |
| 42 | 1.1.1.3.1.1 | Entidade Confeiteiro, Cliente, Celular, Endereço, Cidade, Estado, Endereço Confeiteiro e Endereço Cliente | 10h | 2019-08-23 13:00 A | 2019-08-27 15:00 A |  | 100% | 2019-08-23 13:00 | 2019-08-27 15:00 | 10h | Full-Stack - CG | 10h | 10h | 521.6 | 521.6 | 521.6 |
| 43 | 1.1.1.3.1.2 | Entidade Produto, Categoria, Quantidade, Avaliação | 5h | 2019-09-06 15:00 A | 2019-09-09 16:00 A | 51 | 100% | 2019-09-06 15:00 | 2019-09-09 15:00 | 4h | Full-Stack - KL | 5h | 5h | 260.8 | 208.64 | 260.8 |
| 44 | 1.1.1.3.1.3 | Entidade Itens Pedidos, Pedido, Boleto | 4h | 2019-10-25 13:00 A | 2019-10-25 17:00 A | 55 | 100% | 2019-10-04 15:00 | 2019-10-07 15:00 | 4h | Full-Stack - KL | 4h | 4h | 208.64 | 208.64 | 208.64 |
| 45 | 1.2 | **Desenvolvimento** | 27.38d | 2019-08-27 15:00 A | 2019-12-10 14:00 A |  | 100% | 2019-08-27 15:00 | 2019-11-12 15:00 | 22d |  | 469h | 469h | 24,642.2 | 11,050.28 | 24,642.2 |
| 46 | 1.2.1 | **API** | 18.25d | 2019-08-27 15:00 A | 2019-10-29 17:00 A |  | 100% | 2019-08-27 15:00 | 2019-10-14 15:00 | 13.5d |  | 75h | 75h | 4,066.44 | 4,764.32 | 4,066.44 |
| 47 | 1.2.1.1 | Usuários - Cliente e Confeiteiro | 8h | 2019-08-27 15:00 A | 2019-08-30 15:00 A | 42 | 100% | 2019-08-27 15:00 | 2019-08-30 15:00 | 8h | ECLIPSE [1 SOF]; Full-Stack - CG | 8h | 8h | 417.28 | 417.28 | 417.28 |
| 48 | 1.2.1.2 | Celular, Cidade, Estado, Endereço | 4h | 2019-08-30 15:00 A | 2019-09-02 15:00 A | 47 | 100% | 2019-08-30 15:00 | 2019-09-02 15:00 | 4h | ECLIPSE [1 SOF]; Full-Stack - CG | 4h | 4h | 208.64 | 208.64 | 208.64 |
| 49 | 1.2.1.3 | Endereço do Cliente | 4h | 2019-09-02 15:00 A | 2019-09-03 15:00 A | 48 | 100% | 2019-09-02 15:00 | 2019-09-03 15:00 | 4h | ECLIPSE [1 SOF]; Full-Stack - CG | 4h | 4h | 208.64 | 208.64 | 208.64 |
| 50 | 1.2.1.4 | Endereço do Confeiteiro | 4h | 2019-09-02 15:00 A | 2019-09-03 15:00 A | 48 | 100% | 2019-09-02 15:00 | 2019-09-03 15:00 | 4h | ECLIPSE [1 SOF]; Full-Stack - KS | 4h | 4h | 224.48 | 224.48 | 224.48 |
| 51 | 1.2.1.5 | Foto dos Usuários | 10h | 2019-09-03 15:00 A | 2019-09-06 17:00 A | 50 | 100% | 2019-09-03 15:00 | 2019-09-06 15:00 | 8h | ECLIPSE [2 SOF]; Full-Stack - KS | 10h | 10h | 561.2 | 448.96 | 561.2 |
| 52 | 1.2.1.6 | Produtos | 12h | 2019-09-09 16:00 A | 2019-09-13 16:00 A | 43 | 100% | 2019-09-09 15:00 | 2019-09-13 15:00 | 12h | ECLIPSE [1 SOF]; Full-Stack - KS | 12h | 12h | 673.44 | 673.44 | 673.44 |
| 53 | 1.2.1.7 | Avaliação dos Produtos/Confeiteiro | 4h | 2019-09-13 16:00 A | 2019-09-16 16:00 A | 52 | 100% | 2019-09-13 15:00 | 2019-09-16 15:00 | 4h | ECLIPSE [1 SOF]; Full-Stack - EL | 4h | 4h | 208.64 | 208.64 | 208.64 |
| 54 | 1.2.1.8 | Quantidade - Produtos | 4h | 2019-09-16 16:00 A | 2019-09-17 16:00 A | 53 | 100% | 2019-09-16 15:00 | 2019-09-17 15:00 | 4h | ECLIPSE [1 SOF]; Full-Stack - EL | 4h | 4h | 208.64 | 208.64 | 208.64 |
| 55 | 1.2.1.9 | Login - Cliente e Confeiteiro | 13h | 2019-10-18 16:00 A | 2019-10-24 17:00 A | 71 | 100% | 2019-09-26 15:00 | 2019-10-04 15:00 | 20h | ECLIPSE [0.65 SOF]; Full-Stack - KS | 13h | 13h | 729.56 | 1,122.4 | 729.56 |
| 56 | 1.2.1.10 | Itens do Pedido (carrinho) | 4h | 2019-10-25 13:00 A | 2019-10-25 17:00 A | 55 | 100% | 2019-10-04 15:00 | 2019-10-07 15:00 | 4h | ECLIPSE [1 SOF]; Full-Stack - CG | 4h | 4h | 208.64 | 208.64 | 208.64 |
| 57 | 1.2.1.11 | Gerar Pedido | 8h | 2019-10-28 13:00 A | 2019-10-29 17:00 A | 56 | 100% | 2019-10-07 15:00 | 2019-10-10 15:00 | 8h | ECLIPSE [1 SOF]; Full-Stack - KL | 8h | 8h | 417.28 | 417.28 | 417.28 |
| 58 | 1.2.2 | **Web** | 26.38d | 2019-08-30 15:00 A | 2019-12-10 14:00 A |  | 100% | 2019-08-30 15:00 | 2019-11-05 15:00 | 19d |  | 279h | 279h | 14,498.16 | 5,034.12 | 14,498.16 |
| 59 | 1.2.2.1 | Cadastro de Cliente | 8h | 2019-08-30 15:00 A | 2019-09-03 15:00 A | 47 | 100% | 2019-08-30 15:00 | 2019-09-02 15:00 | 4h | Full-Stack - EL; VISUAL STUDIO CODE [1 SOF] | 8h | 8h | 417.28 | 208.64 | 417.28 |
| 60 | 1.2.2.2 | Cadastro de Confeiteiro | 8h | 2019-09-03 15:00 A | 2019-09-06 15:00 A | 59 | 100% | 2019-09-02 15:00 | 2019-09-03 15:00 | 4h | Full-Stack - EL; VISUAL STUDIO CODE [1 SOF] | 8h | 8h | 417.28 | 208.64 | 417.28 |
| 61 | 1.2.2.3 | Cadastro de Endereço do Confeiteiro | 12h | 2019-09-06 15:00 A | 2019-09-12 15:00 A | 60 | 100% | 2019-09-03 15:00 | 2019-09-06 15:00 | 8h | Full-Stack - EL; VISUAL STUDIO CODE [1 SOF] | 12h | 12h | 625.92 | 417.28 | 625.92 |
| 62 | 1.2.2.4 | Cadastro de Foto do Confeiteiro | 12h | 2019-09-12 15:00 A | 2019-09-17 15:00 A | 61 | 100% | 2019-09-06 15:00 | 2019-09-09 15:00 | 4h | Full-Stack - EL; VISUAL STUDIO CODE [1 SOF] | 12h | 12h | 625.92 | 208.64 | 625.92 |
| 63 | 1.2.2.5 | **Área Administrativa** | 26.38d | 2019-08-30 15:00 A | 2019-12-10 14:00 A |  | 100% | 2019-08-30 15:00 | 2019-11-05 15:00 | 19d |  | 82h | 82h | 4,332.56 | 1,436.04 | 4,332.56 |
| 64 | 1.2.2.5.1 | Cadastro/Exibição/Ativar e Desativar Produtos | 14h | 2019-09-13 16:00 A | 2019-09-20 14:00 A | 52 | 100% | 2019-09-13 15:00 | 2019-09-17 14:00 | 7h | Full-Stack - KS; VISUAL STUDIO CODE [2 SOF] | 14h | 14h | 785.68 | 392.84 | 785.68 |
| 65 | 1.2.2.5.2 | Atualizar dados do confeiteiro | 4h | 2019-08-30 15:00 A | 2019-09-02 15:00 A | 47 | 100% | 2019-08-30 15:00 | 2019-09-02 15:00 | 4h | Full-Stack - KL; VISUAL STUDIO CODE [1 SOF] | 4h | 4h | 208.64 | 208.64 | 208.64 |
| 66 | 1.2.2.5.3 | Atualizar senha e email | 8h | 2019-09-17 16:00 A | 2019-09-20 16:00 A | 54 | 100% | 2019-09-17 15:00 | 2019-09-19 15:00 | 4h | Full-Stack - EL; VISUAL STUDIO CODE [1 SOF] | 8h | 8h | 417.28 | 208.64 | 417.28 |
| 67 | 1.2.2.5.4 | Atualizar endereço | 40h | 2019-09-19 16:00 A | 2019-10-07 16:00 A | 66 | 100% | 2019-09-19 15:00 | 2019-09-20 15:00 | 4h | Full-Stack - KL; VISUAL STUDIO CODE [1 SOF] | 40h | 40h | 2,086.4 | 208.64 | 2,086.4 |
| 68 | 1.2.2.5.5 | Informações dos Pedidos | 16h | 2019-12-03 14:00 A | 2019-12-10 14:00 A | 97 | 100% | 2019-11-01 15:00 | 2019-11-05 15:00 | 8h | Full-Stack - KL; VISUAL STUDIO CODE [1 SOF] | 16h | 16h | 834.56 | 417.28 | 834.56 |

| ID | WBS | Task | Duration | Start | Finish | Predecessors | Complete | Baseline start | Baseline finish | Baseline duration | Resources | Work | Actual work | Cost | Baseline cost | Actual cost |
| --- | --- | --- | --- | --- | --- | --- | --- | --- | --- | --- | --- | --- | --- | --- | --- | --- |
| 69 | 1.2.2.6 | **Site** | 11d | 2019-09-20 16:00 A | 2019-10-29 16:00 A |  | 100% | 2019-09-20 15:00 | 2019-10-08 15:00 | 5d |  | 101h | 101h | 5,158.24 | 2,554.88 | 5,158.24 |
| 70 | 1.2.2.6.1 | Home | 40h | 2019-09-20 16:00 A | 2019-10-11 16:00 A | 67 | 100% | 2019-09-20 15:00 | 2019-09-24 15:00 | 8h | Full-Stack - CG; VISUAL STUDIO CODE [2 SOF] | 40h | 40h | 2,086.4 | 417.28 | 2,086.4 |
| 71 | 1.2.2.6.2 | Tela de Produtos | 16h | 2019-10-11 16:00 A | 2019-10-18 16:00 A | 70 | 100% | 2019-09-24 15:00 | 2019-09-26 15:00 | 4h | Full-Stack - KS; VISUAL STUDIO CODE [1 SOF] | 16h | 16h | 897.92 | 224.48 | 897.92 |
| 72 | 1.2.2.6.3 | Descrição Produto | 16h | 2019-10-15 16:00 A | 2019-10-25 16:00 A | 75 | 100% | 2019-09-27 15:00 | 2019-10-01 15:00 | 8h | Full-Stack - KL; VISUAL STUDIO CODE [1 SOF] | 16h | 16h | 834.56 | 417.28 | 834.56 |
| 73 | 1.2.2.6.4 | Fale Conosco | 2h | 2019-10-11 16:00 A | 2019-10-14 14:00 A | 70 | 100% | 2019-09-24 15:00 | 2019-09-24 17:00 | 2h | Estagiário - EL; VISUAL STUDIO CODE [1 SOF] | 2h | 2h | 17.68 | 17.68 | 17.68 |
| 74 | 1.2.2.6.5 | Sobre | 2h | 2019-10-14 14:00 A | 2019-10-14 16:00 A | 73 | 100% | 2019-09-30 13:00 | 2019-09-30 15:00 | 2h | Estagiário - EL; VISUAL STUDIO CODE [1 SOF] | 2h | 2h | 17.68 | 17.68 | 17.68 |
| 75 | 1.2.2.6.6 | Perfil do Confeiteiro | 8h | 2019-10-11 16:00 A | 2019-10-15 16:00 A | 70 | 100% | 2019-09-24 15:00 | 2019-09-27 15:00 | 8h | Full-Stack - KL; VISUAL STUDIO CODE [1 SOF] | 8h | 8h | 417.28 | 417.28 | 417.28 |
| 76 | 1.2.2.6.7 | Tela de Confeiteiros | 4h | 2019-10-14 16:00 A | 2019-10-15 16:00 A | 71 | 100% | 2019-09-30 13:00 | 2019-10-01 17:00 | 8h | Full-Stack - CG; VISUAL STUDIO CODE [0.5 SOF] | 4h | 4h | 208.64 | 417.28 | 208.64 |
| 77 | 1.2.2.6.8 | Login Cliente | 6h | 2019-10-07 16:00 A | 2019-10-10 14:00 A | 78 | 100% | 2019-10-07 15:00 | 2019-10-08 15:00 | 4h | Full-Stack - CG; VISUAL STUDIO CODE [2 SOF] | 6h | 6h | 312.96 | 208.64 | 312.96 |
| 78 | 1.2.2.6.9 | Login Confeiteiro | 3h | 2019-10-22 13:00 A | 2019-10-22 16:00 A | 55 | 100% | 2019-10-04 15:00 | 2019-10-07 15:00 | 4h | Full-Stack - EL; VISUAL STUDIO CODE [0.75 SOF] | 3h | 3h | 156.48 | 208.64 | 156.48 |
| 79 | 1.2.2.6.10 | Produtos mais bem avaliados de um confeiteiro | 4h | 2019-10-25 16:00 A | 2019-10-28 16:00 A | 72 | 100% | 2019-10-01 15:00 | 2019-10-03 15:00 | 4h | Full-Stack - KL; VISUAL STUDIO CODE [1 SOF]; FIGMA [1 SOF] | 4h | 4h | 208.64 | 208.64 | 208.64 |
| 80 | 1.2.2.6.11 | Produtos com menor preço de um confeiteiro | 4h | 2019-10-28 16:00 A | 2019-10-29 16:00 A | 79 | 100% | 2019-10-03 15:00 | 2019-10-04 15:00 | 4h |  |  |  |  |  |  |
| 81 | 1.2.2.7 | **Área Cliente** | 7.5d | 2019-10-25 14:00 A | 2019-11-29 14:00 A |  | 100% | 2019-10-08 15:00 | 2019-11-12 15:00 | 10d |  | 56h | 56h | 2,920.96 | 1,251.84 | 2,920.96 |
| 82 | 1.2.2.7.1 | Perfil - Edição de dados | 40h | 2019-10-25 14:00 A | 2019-11-12 14:00 A | 109 | 100% | 2019-10-08 15:00 | 2019-10-11 15:00 | 8h | Full-Stack - EL; VISUAL STUDIO CODE [2 SOF] | 40h | 40h | 2,086.4 | 417.28 | 2,086.4 |
| 83 | 1.2.2.7.2 | Histórico de pedidos | 8h | 2019-11-25 14:00 A | 2019-11-29 14:00 A | 84 | 100% | 2019-11-08 15:00 | 2019-11-12 15:00 | 8h | Full-Stack - EL; VISUAL STUDIO CODE [1 SOF] | 8h | 8h | 417.28 | 417.28 | 417.28 |
| 84 | 1.2.2.7.3 | Andamento dos pedidos realizados | 8h | 2019-11-14 14:00 A | 2019-11-25 14:00 A | 68 | 100% | 2019-11-05 15:00 | 2019-11-08 15:00 | 8h | Full-Stack - EL; VISUAL STUDIO CODE [1 SOF] | 8h | 8h | 417.28 | 417.28 | 417.28 |
| 85 | 1.2.3 | **Mobile** | 24.38d | 2019-09-06 15:00 A | 2019-12-10 14:00 A |  | 100% | 2019-09-06 15:00 | 2019-11-08 15:00 | 18d |  | 115h | 115h | 6,077.6 | 4,653.44 | 6,077.6 |
| 86 | 1.2.3.1 | Upload Foto dos Usuários | 16h | 2019-09-10 15:00 A | 2019-09-17 15:00 A | 87 | 100% | 2019-09-10 15:00 | 2019-09-13 15:00 | 8h | ANDROID STUDIO [1 SOF]; Full-Stack - AA | 16h | 16h | 834.56 | 417.28 | 834.56 |
| 87 | 1.2.3.2 | Cadastro de Confeiteiro e Cliente | 8h | 2019-09-06 15:00 A | 2019-09-10 15:00 A | 51 | 100% | 2019-09-06 15:00 | 2019-09-10 15:00 | 8h | ANDROID STUDIO [1 SOF]; Full-Stack - AA | 8h | 8h | 417.28 | 417.28 | 417.28 |
| 88 | 1.2.3.3 | Cadastro de Endereço do Confeiteiro | 8h | 2019-09-13 15:00 A | 2019-09-17 15:00 A | 86 | 100% | 2019-09-13 15:00 | 2019-09-16 15:00 | 4h | ANDROID STUDIO [1 SOF]; Full-Stack - AA | 8h | 8h | 417.28 | 208.64 | 417.28 |
| 89 | 1.2.3.4 | Login - Cliente e Confeiteiro | 8h | 2019-10-04 16:00 A | 2019-10-25 15:00 A | 55 | 100% | 2019-10-04 15:00 | 2019-10-10 15:00 | 8h | ANDROID STUDIO [1 SOF]; Full-Stack - AA | 8h | 8h | 417.28 | 417.28 | 417.28 |
| 90 | 1.2.3.5 | Perfil do Confeiteiro | 4h | 2019-10-31 14:00 A | 2019-11-01 14:00 A | 95 | 100% | 2019-10-18 15:00 | 2019-10-22 15:00 | 4h | ANDROID STUDIO [1 SOF]; Full-Stack - AA | 4h | 4h | 208.64 | 208.64 | 208.64 |
| 91 | 1.2.3.6 | Produtos do Confeiteiro | 4h | 2019-11-01 14:00 A | 2019-11-04 14:00 A | 90 | 100% | 2019-10-22 15:00 | 2019-10-25 15:00 | 4h | ANDROID STUDIO [1 SOF]; Full-Stack - AA | 4h | 4h | 208.64 | 208.64 | 208.64 |
| 92 | 1.2.3.7 | Menu Inferior - Cliente | 4h | 2019-11-07 15:00 A | 2019-11-08 15:00 A | 93 | 100% | 2019-10-14 15:00 | 2019-10-15 15:00 | 4h | ANDROID STUDIO [1 SOF]; Full-Stack - AA | 4h | 4h | 208.64 | 208.64 | 208.64 |
| 93 | 1.2.3.8 | Tela Inicio - Cliente | 28h | 2019-10-25 15:00 A | 2019-11-07 15:00 A | 89 | 100% | 2019-10-10 15:00 | 2019-10-14 15:00 | 8h | ANDROID STUDIO [1 SOF]; Full-Stack - AA | 28h | 28h | 1,460.48 | 417.28 | 1,460.48 |
| 94 | 1.2.3.9 | Tela de produtos por categoria | 6h | 2019-10-25 16:00 A | 2019-10-29 14:00 A | 92 | 100% | 2019-10-15 15:00 | 2019-10-17 15:00 | 4h | ANDROID STUDIO [2 SOF]; Full-Stack - AA | 6h | 6h | 312.96 | 208.64 | 312.96 |
| 95 | 1.2.3.10 | Tela de Confeiteiros | 1h | 2019-10-29 14:00 A | 2019-10-29 15:00 A | 94 | 100% | 2019-10-17 15:00 | 2019-10-18 15:00 | 4h | ANDROID STUDIO [0.25 SOF]; Full-Stack - AA | 1h | 1h | 52.16 | 208.64 | 52.16 |
| 96 | 1.2.3.11 | Itens p/ um pedido | 8h | 2019-11-04 14:00 A | 2019-11-07 14:00 A | 91 | 100% | 2019-10-25 15:00 | 2019-10-29 15:00 | 8h | ANDROID STUDIO [1 SOF]; Full-Stack - CG | 8h | 8h | 417.28 | 417.28 | 417.28 |
| 97 | 1.2.3.12 | Pedido - Cliente | 12h | 2019-11-07 14:00 A | 2019-11-12 14:00 A | 96 | 100% | 2019-10-29 15:00 | 2019-11-01 15:00 | 8h | ANDROID STUDIO [2 SOF]; Full-Stack - KS | 12h | 12h | 673.44 | 448.96 | 673.44 |
| 98 | 1.2.3.13 | Situação do pedido - Cliente | 8h | 2019-12-06 14:00 A | 2019-12-10 14:00 A |  | 100% | 2019-11-05 15:00 | 2019-11-08 15:00 | 8h | ANDROID STUDIO [1 SOF]; Full-Stack - KS | 8h | 8h | 448.96 | 448.96 | 448.96 |

| ID | WBS | Task | Duration | Start | Finish | Predecessors | Complete | Baseline start | Baseline finish | Baseline duration | Resources | Work | Actual work | Cost | Baseline cost | Actual cost |
| --- | --- | --- | --- | --- | --- | --- | --- | --- | --- | --- | --- | --- | --- | --- | --- | --- |
| 99 | 1.3 | **Teste** | 11.88d | 2019-09-13 16:00 A | 2019-10-25 15:00 A |  | 100% | 2019-09-09 15:00 | 2019-10-08 15:00 | 8.5d |  | 8h | 8h | 70.72 | 123.76 | 70.72 |
| 100 | 1.3.1 | **Mobile** | 11.88d | 2019-09-13 16:00 A | 2019-10-25 15:00 A |  | 100% | 2019-09-13 15:00 | 2019-10-04 17:00 | 6.25d |  | 4h | 4h | 35.36 | 53.04 | 35.36 |
| 101 | 1.3.1.1 | Cadastro de Usuários | 1h | 2019-09-17 15:00 A | 2019-09-17 16:00 A | 97 | 100% | 2019-09-16 15:00 | 2019-09-16 17:00 | 2h | Estagiário - CG | 1h | 1h | 8.84 | 17.68 | 8.84 |
| 102 | 1.3.1.2 | Atualização dos Dados do Confeiteiro | 1h | 2019-09-13 16:00 A | 2019-09-13 17:00 A | 101 | 100% | 2019-09-13 15:00 | 2019-09-13 17:00 | 2h | Estagiário - CG | 1h | 1h | 8.84 | 17.68 | 8.84 |
| 103 | 1.3.1.3 | Login dos Usuários | 1h | 2019-10-25 13:00 A | 2019-10-25 14:00 A | 102 | 100% | 2019-10-04 15:00 | 2019-10-04 17:00 | 2h | Estagiário - CG | 1h | 1h | 8.84 | 17.68 | 8.84 |
| 104 | 1.3.1.4 | Pedido - Cliente | 1h | 2019-10-25 14:00 A | 2019-10-25 15:00 A | 103 | 100% |  |  |  | Estagiário - CG | 1h | 1h | 8.84 |  | 8.84 |
| 105 | 1.3.2 | **Web** | 10.88d | 2019-09-17 15:00 A | 2019-10-25 14:00 A |  | 100% | 2019-09-09 15:00 | 2019-10-08 15:00 | 8.5d |  | 4h | 4h | 35.36 | 70.72 | 35.36 |
| 106 | 1.3.2.1 | Cadastro de Usuários | 1h | 2019-09-17 15:00 A | 2019-09-17 16:00 A | 103 | 100% | 2019-09-09 15:00 | 2019-09-09 17:00 | 2h | Estagiário - EL | 1h | 1h | 8.84 | 17.68 | 8.84 |
| 107 | 1.3.2.2 | Cadastro de Produto | 1h | 2019-09-20 14:00 A | 2019-09-20 15:00 A | 106 | 100% | 2019-09-17 14:00 | 2019-09-17 16:00 | 2h | Estagiário - KS | 1h | 1h | 8.84 | 17.68 | 8.84 |
| 108 | 1.3.2.3 | Login dos Usuários | 1h | 2019-10-22 16:00 A | 2019-10-22 17:00 A | 107 | 100% | 2019-10-07 15:00 | 2019-10-07 17:00 | 2h | Estagiário - KS | 1h | 1h | 8.84 | 17.68 | 8.84 |
| 109 | 1.3.2.4 | Edição dados do cliente | 1h | 2019-10-25 13:00 A | 2019-10-25 14:00 A | 108 | 100% | 2019-10-08 13:00 | 2019-10-08 15:00 | 2h | Estagiário - CG | 1h | 1h | 8.84 | 17.68 | 8.84 |
